# Project_mDrivingSchool

How a schedule from MS Project changed from version to version. A marks actual dates.

## Version 1 (saved 2017-01-05)

Note of the change: Napravljen projektni plan u MS Projectu

| ID | WBS | Task | Duration | Start | Finish | Predecessors | Total float |
| --- | --- | --- | --- | --- | --- | --- | --- |
| 1 | 1 | **mDrivingSchool** | 21.31d | 2016-09-26 | 2017-01-23 |  | 0d |
| 2 |  | POČETAK PROJEKTA | 0d | 2016-09-26 | 2016-09-26 |  | 0.09d |
| 3 | 1.2 | **Planiranje teme za projekt** | 2.62d | 2016-09-26 | 2016-10-10 | 2 | 0.09d |
| 4 |  | Sastanak tima(1) | 3h | 2016-09-26 | 2016-09-28 | 2 | 0.09d |
| 5 |  | Osmišljavanje teme za projekt | 8h | 2016-09-29 | 2016-10-03 | 4 | 0.09d |
| 6 |  | Finaliziranje ideje za projekt | 4h | 2016-10-04 | 2016-10-06 | 5 | 0.09d |
| 7 |  | Odlazak poduzeću na razgovor | 3h | 2016-10-07 | 2016-10-08 | 6 | 0.09d |
| 8 |  | Izrada I predaja početnog opisa projekta | 3h | 2016-10-09 | 2016-10-10 | 7 | 0.09d |
| 9 |  | ZAVRŠETAK PLANIRANJA TEME | 0d | 2016-10-10 | 2016-10-10 | 8 | 0.09d |
| 10 | 1.3 | **Realizacija projekta** | 16.34d | 2016-10-22 | 2017-01-22 | 9FS+2.1d | 0d |
| 11 |  | Izrada projektnog plana I gantograma | 6h | 2016-10-22 | 2016-10-27 | 9 | 0.09d |
| 12 |  | Sprint planning (1) | 1.5h | 2016-10-27 | 2016-10-28 | 11 | 0.09d |
| 13 | 1.3.3 | **Prvi sprint** | 2.59d | 2016-10-28 | 2016-11-11 | 12 | 0.06d |
| 14 | 1.3.3.1 | **Osnovni dizajn sučelja** | 2.21d | 2016-10-28 | 2016-11-09 | 11 | 0d |
| 15 |  | Vozila | 5h | 2016-10-28 | 2016-10-30 | 12 | 0.09d |
| 16 |  | Login ekran | 3h | 2016-10-30 | 2016-10-31 | 15 | 0.09d |
| 17 |  | Kontakti | 4h | 2016-10-31 | 2016-11-02 | 16 | 0.09d |
| 18 |  | O nama | 2h | 2016-11-02 | 2016-11-03 | 17 | 0.09d |
| 19 |  | Dizajn početnog ekrana | 5h | 2016-11-03 | 2016-11-05 | 18 | 0.09d |
| 20 |  | Usklađivanje svih elemenata | 5h | 2016-11-06 | 2016-11-09 | 19 | 0d |
| 21 | 1.3.3.2 | **Predaja zahtjeva za upis u autoškolu** | 0.38d | 2016-11-09 | 2016-11-11 | 20 | 0d |
| 22 |  | Kreiranje forme online upisa | 2h | 2016-11-09 | 2016-11-10 | 20 | 0.06d |
| 23 |  | Stavljanje forme online upisa u funkciju | 3h | 2016-11-10 | 2016-11-11 | 22 | 0.06d |
| 24 |  | Sprint review (1) | 1.5h | 2016-11-12 | 2016-11-12 | 23 | 0.06d |
| 25 |  | Izrada dokumentacije prve faze | 8h | 2016-11-12 | 2016-11-14 | 24 | 0.12d |
| 26 |  | PREDAJA PRVE FAZE PROJEKTA | 0d | 2016-11-15 | 2016-11-15 | 25 | 0d |
| 27 |  | Sprint planning (2) | 1.5h | 2016-11-15 | 2016-11-16 | 26 | 0d |
| 28 | 1.3.8 | **Drugi sprint** | 2.5d | 2016-11-16 | 2016-11-30 | 27 | 0d |
| 29 |  | Lokacija autoškole | 3h | 2016-11-16 | 2016-11-17 | 27 | 0.06d |
| 30 |  | Prijava korisnika u aplikaciju | 5h | 2016-11-18 | 2016-11-20 | 29 | 0.06d |
| 31 | 1.3.8.3 | **Testovi znanja** | 1.62d | 2016-11-21 | 2016-11-30 | 30 | 0.06d |
| 32 |  | Izrada dizajna testova znanja | 5h | 2016-11-21 | 2016-11-24 | 30 | 0.06d |
| 33 |  | Testovi znanja iz propisa | 5h | 2016-11-25 | 2016-11-27 | 32 | 0.06d |
| 34 |  | Testovi znanja iz prve pomoći | 3h | 2016-11-28 | 2016-11-30 | 33 | 0.06d |
| 35 |  | Sprint review (2) | 1.5h | 2016-12-01 | 2016-12-01 | 34 | 0.19d |
| 36 |  | Sprint planning (3) | 1.5h | 2016-12-01 | 2016-12-02 | 35 | 0.19d |
| 37 | 1.3.11 | **Treći sprint** | 2.62d | 2016-12-03 | 2016-12-17 | 34FS+0.5d | 0.06d |
| 38 |  | Dodavanje polaznika | 2h | 2016-12-03 | 2016-12-04 | 36 | 0.06d |
| 39 | 1.3.11.2 | **Prilagođeni dizajn prema ovlastima** | 1.69d | 2016-12-04 | 2016-12-14 | 38 | 0.06d |
| 40 |  | Dorada sučelja neregistriranog korisnika | 3h | 2016-12-04 | 2016-12-06 | 38 | 0.06d |
| 41 |  | Izrada sučelja zaposlenika | 3h | 2016-12-07 | 2016-12-08 | 40 | 0.06d |
| 42 |  | Izrada sučelja polaznika | 3h | 2016-12-09 | 2016-12-10 | 41 | 0.06d |
| 43 |  | Popratne aktivnosti dizajna | 4.5h | 2016-12-11 | 2016-12-14 | 42 | 0.06d |
| 44 |  | Informacije o polaznicima | 8h | 2016-12-14 | 2016-12-17 | 43 | 0.16d |
| 45 |  | Sprint review (3) | 1.5h | 2016-12-18 | 2016-12-18 | 44 | 0.1d |
| 46 |  | Sprint planning (4) | 1.5h | 2016-12-18 | 2016-12-19 | 45 | 0.1d |
| 47 | 1.3.14 | **Četvrti sprint (početak)** | 0.38d | 2016-12-21 | 2016-12-23 | 46FS+0.2d | 0.1d |
| 48 |  | Dodjela polaznika instruktoru | 3h | 2016-12-21 | 2016-12-23 | 46 | 0.1d |
| 49 |  | Izrada dokumentacije druge faze | 12h | 2016-12-23 | 2016-12-31 | 48 | 0.1d |
| 50 |  | PREDAJA DRUGE FAZE PROJEKTA | 0d | 2017-01-07 | 2017-01-07 | 49FS+1.2d | 0.1d |
| 51 | 1.3.17 | **Četvrti sprint (nastavak)** | 1.98d | 2017-01-07 | 2017-01-18 | 50 | 0d |
| 52 |  | Slanje obavijesti polaznicima | 8h | 2017-01-07 | 2017-01-09 | 50 | 0.1d |
| 53 |  | Informacije o prošlim ispitima | 3h | 2017-01-09 | 2017-01-11 | 52 | 0.1d |
| 54 |  | Raspored vožnje | 8h | 2017-01-11 | 2017-01-14 | 53 | 0.1d |
| 55 |  | Status broja sati vožnje polaznika | 5h | 2017-01-14 | 2017-01-15 | 54 | 0.1d |
| 56 |  | Ažuriranje rezultata polaznika na ispitima | 3h | 2017-01-15 | 2017-01-16 | 55 | 0.1d |
| 57 |  | Realizacija reklama u aplikaciji | 3h | 2017-01-16 | 2017-01-17 | 56 | 0.1d |
| 58 |  | Testiranje I završna dorada aplikacije | 3h | 2017-01-17 | 2017-01-18 | 57 | 0.1d |
| 59 |  | Sprint review (4) | 1.5h | 2017-01-19 | 2017-01-19 | 58 | 0d |
| 60 |  | Izrada završne verzije dokumentacije | 6h | 2017-01-19 | 2017-01-22 | 59 | 0d |
| 61 |  | Prezentacija I obrana projekta | 2h | 2017-01-22 | 2017-01-23 | 60 | 0d |
| 62 |  | ZAVRŠEN PROJEKT | 0d | 2017-01-23 | 2017-01-23 | 61 | 0d |

## Version 2 (saved 2017-01-06)

Note of the change: Ažuriran projektni plan i budžet

Last finish stays 2017-01-23.

Changed:

| ID | Task | Start | Finish | Duration | Total float | Predecessors | Other |
| --- | --- | --- | --- | --- | --- | --- | --- |
| 4 | Početni sastanak I dogovor tima |  |  |  |  |  | was named Sastanak tima(1); resources Kofjač; Bunić; Lazar → Kofjač [50%]; Bunić [50%]; Lazar [50%] |
| 5 | Osmišljavanje teme za projekt |  |  |  |  |  | resources Kofjač; Bunić; Lazar → Kofjač [33%]; Bunić [33%]; Lazar [33%] |
| 6 | Finaliziranje ideje za projekt |  |  |  |  |  | resources Kofjač; Bunić; Lazar → Kofjač [33%]; Bunić [33%]; Lazar [33%] |
| 7 | Odlazak poduzeću na razgovor |  |  |  |  |  | resources Kofjač; Bunić; Lazar → Kofjač [50%]; Bunić [50%]; Lazar [50%] |
| 8 | Izrada I predaja početnog opisa projekta |  |  |  |  |  | resources Kofjač; Bunić; Lazar; PC [300%] → Kofjač [33%]; Bunić [33%]; Lazar [33%]; PC [300%] |
| 11 | Izrada projektnog plana i gantograma |  |  |  |  |  | was named Izrada projektnog plana I gantograma |
| 12 | Sprint planning (1) |  |  |  |  |  | resources Kofjač; Bunić; Lazar; PC [300%] → Kofjač [50%]; Bunić [50%]; Lazar [50%]; PC [300%] |
| 19 | Dizajn početnog ekrana |  |  |  |  |  | resources Bunić; Lazar; PC [200%] → Bunić [50%]; Lazar [50%]; PC [200%] |
| 20 | Usklađivanje svih elemenata |  |  |  |  |  | resources Kofjač; Bunić; Lazar; PC [300%] → Kofjač [33%]; Bunić [33%]; Lazar [33%]; PC [300%] |
| 24 | Sprint review (1) |  |  |  | 0.06d → 0.03d |  | resources Kofjač; Bunić; Lazar; PC [300%] → Kofjač [50%]; Bunić [50%]; Lazar [50%]; PC [300%] |
| 25 | Izrada dokumentacije prve faze |  | 2016-11-14 → 2016-11-15 (+1d) |  | 0.12d → 0.03d | 24 → 24FS+0.1d | resources Kofjač; Bunić; Lazar; PC [300%] → Kofjač [33%]; Bunić [33%]; Lazar [33%]; PC [300%] |
| 27 | Sprint planning (2) |  |  |  | 0d → 0.03d |  | resources Kofjač; Bunić; Lazar; PC [300%] → Kofjač [50%]; Bunić [50%]; Lazar [50%]; PC [300%] |
| 30 | Prijava korisnika u aplikaciju | 2016-11-18 → 2016-11-17 (-1d) |  |  | 0.06d → 0.09d |  |  |
| 31 | **Testovi znanja** | 2016-11-21 → 2016-11-20 (-1d) |  |  | 0.06d → 0.09d |  |  |
| 32 | Izrada dizajna testova znanja | 2016-11-21 → 2016-11-20 (-1d) |  |  | 0.06d → 0.09d |  | resources Kofjač; Bunić; PC [200%] → Kofjač [50%]; Bunić [50%]; PC [200%] |
| 33 | Testovi znanja iz propisa | 2016-11-25 → 2016-11-24 (-1d) |  |  | 0.06d → 0.09d |  |  |
| 34 | Testovi znanja iz prve pomoći | 2016-11-28 → 2016-11-27 (-1d) |  |  | 0.06d → 0.09d |  |  |
| 35 | Sprint review (2) | 2016-12-01 → 2016-11-30 (-1d) |  |  | 0.19d → 0.21d |  | resources Kofjač; Bunić; Lazar; PC [300%] → Kofjač [50%]; Bunić [50%]; Lazar [50%]; PC [300%] |
| 36 | Sprint planning (3) |  |  |  | 0.19d → 0.21d |  | resources Kofjač; Bunić; Lazar; PC [300%] → Kofjač [50%]; Bunić [50%]; Lazar [50%]; PC [300%] |
| 37 | **Treći sprint** |  |  | 2.62d → 2.65d | 0.06d → 0.09d |  |  |
| 38 | Dodavanje polaznika |  |  |  | 0.06d → 0.09d |  | resources Kofjač; Lazar; PC [200%] → Kofjač [50%]; Lazar [50%]; PC [200%] |
| 41 | Izrada sučelja zaposlenika | 2016-12-07 → 2016-12-06 (-1d) |  |  | 0.06d → 0.09d |  | resources PC [200%]; Bunić; Lazar → PC [200%]; Bunić [50%]; Lazar [50%] |
| 42 | Izrada sučelja polaznika | 2016-12-09 → 2016-12-08 (-1d) |  |  | 0.06d → 0.09d |  | resources Kofjač; Lazar; PC [200%] → Kofjač [50%]; Lazar [50%]; PC [200%] |
| 43 | Popratne aktivnosti dizajna | 2016-12-11 → 2016-12-10 (-1d) |  |  | 0.06d → 0.09d |  | resources Bunić; Lazar; PC → Bunić [50%]; Lazar [50%]; PC [200%] |
| 44 | Informacije o polaznicima |  |  |  | 0.16d → 0.19d |  | resources Bunić; Lazar; PC [200%] → Bunić [50%]; Lazar [50%]; PC [200%] |
| 45 | Sprint review (3) |  |  |  |  |  | resources Kofjač; Bunić; Lazar; PC [300%] → Kofjač [50%]; Bunić [50%]; Lazar [50%]; PC [300%] |
| 46 | Sprint planning (4) |  |  |  |  |  | resources Kofjač; Bunić; Lazar; PC [300%] → Kofjač [50%]; Bunić [50%]; Lazar [50%]; PC [300%] |
| 48 | Dodjela polaznika instruktoru |  |  |  |  |  | resources Kofjač; Lazar; PC [200%] → Kofjač [50%]; Lazar [50%]; PC [200%] |
| 49 | Izrada dokumentacije druge faze |  |  |  |  |  | resources Kofjač; Bunić; Lazar; PC [300%] → Kofjač [33%]; Bunić [33%]; Lazar [33%]; PC [300%] |
| 53 | Informacije o prošlim ispitima |  |  |  |  |  | resources Kofjač; Lazar; PC [200%] → Kofjač [50%]; Lazar [50%]; PC [200%] |
| 54 | Raspored vožnje |  |  |  |  |  | resources Kofjač; Bunić; Lazar; PC [300%] → Kofjač [33%]; Bunić [33%]; Lazar [33%]; PC [300%] |
| 55 | Status broja sati vožnje polaznika |  |  |  |  |  | resources Kofjač; Lazar; PC [200%] → Kofjač [50%]; Lazar [50%]; PC [200%] |
| 56 | Ažuriranje rezultata polaznika na ispitima |  |  |  |  |  | resources Kofjač; Lazar; PC [200%] → Kofjač [50%]; Lazar [50%]; PC [200%] |
| 58 | Testiranje i završna dorada aplikacije |  |  |  |  |  | was named Testiranje I završna dorada aplikacije; resources Kofjač; Bunić; Lazar; PC [300%] → Kofjač [33%]; Bunić [33%]; Lazar [33%]; PC [300%] |
| 59 | Sprint review (4) |  |  |  |  |  | resources Kofjač; Bunić; Lazar; PC [300%] → Kofjač [50%]; Bunić [50%]; Lazar [50%]; PC [300%] |
| 60 | Izrada završne verzije dokumentacije |  |  |  |  |  | resources Kofjač; Bunić; Lazar; PC [300%] → Kofjač [33%]; Bunić [33%]; Lazar [33%]; PC [300%] |
| 61 | Prezentacija i obrana projekta |  |  |  |  |  | was named Prezentacija I obrana projekta |

## Version 3 (saved 2017-01-28)

Note of the change: Ažurirani artefakti za dokumentaciju treće faze

Last finish 2017-01-23 → 2017-02-02 (+10d).

Added:

| ID | Task | Duration | Start | Finish | Predecessors | Resources |
| --- | --- | --- | --- | --- | --- | --- |
| 60 | Dorada dizajna graf. sučelja i prog. koda | 8h | 2017-01-19 | 2017-01-25 | 59 | Kofjač [33%]; Bunić [33%]; Lazar [33%]; PC [300%] |

Changed:

| ID | Task | Start | Finish | Duration | Predecessors | Other |
| --- | --- | --- | --- | --- | --- | --- |
| 1 | **mDrivingSchool** |  | 2017-01-23 → 2017-02-02 (+10d) | 21.31d → 23.06d |  |  |
| 4 | Početni sastanak i dogovor tima |  |  |  |  | was named Početni sastanak I dogovor tima |
| 8 | Izrada i predaja početnog opisa projekta |  |  |  |  | was named Izrada I predaja početnog opisa projekta |
| 10 | **Realizacija projekta** |  | 2017-01-22 → 2017-02-01 (+10d) | 16.34d → 18.09d |  |  |
| 52 | Slanje obavijesti polaznicima |  |  |  |  | resources Bunić; PC → Bunić [50%]; PC [200%]; Kofjač [50%] |
| 53 | Informacije o prošlim ispitima |  |  |  |  | resources Kofjač [50%]; Lazar [50%]; PC [200%] → PC; Bunić |
| 54 | Raspored vožnje |  |  |  |  | resources Kofjač [33%]; Bunić [33%]; Lazar [33%]; PC [300%] → Bunić; PC |
| 61 | Izrada završne verzije dokumentacije | 2017-01-19 → 2017-01-25 (+6d) | 2017-01-22 → 2017-02-01 (+10d) | 6h → 10h | 59 → 60 |  |
| 62 | Prezentacija i obrana projekta | 2017-01-22 → 2017-02-01 (+10d) | 2017-01-23 → 2017-02-02 (+10d) |  |  |  |
| 63 | ZAVRŠEN PROJEKT | 2017-01-23 → 2017-02-02 (+10d) | 2017-01-23 → 2017-02-02 (+10d) |  |  |  |
